# Pelanejamento v1-6

Schedule from MS Project, 2022-11-08 to 2023-01-27, A marks actual dates.

## Calendars

- Standard: Mon-Fri 08:00-12:00, 13:00-17:00; Sat-Sun off. Exceptions (off unless hours are given): 2022-11-14 08:00-12:00, 14:00-18:00 ([Padrão]).

## Resources

| Resource |
| --- |
| Tomiasi |
| Becelli |
| Nozawa |
| Batalhoti |
| Serezane |

## Schedule

| ID | WBS | Task | Duration | Start | Finish | Predecessors | Complete | Remaining | Total slack | Free slack | Constraint | Resources | Work | Actual work | EDT |
| --- | --- | --- | --- | --- | --- | --- | --- | --- | --- | --- | --- | --- | --- | --- | --- |
| 1 | 1 | **Sprint 01 - RF - 1.1 a 1.4** | 26d | 2022-11-08 A | 2022-12-13 |  | 79% | 5.47d |  |  |  |  | 172h | 140h | 1.0 |
| 2 | 1.1 | Casos de Uso + Modelo Conceitual | 3d | 2022-11-08 A | 2022-11-10 A |  | 100% |  |  |  |  | Tomiasi | 24h | 24h | 1.1 |
| 3 | 1.2 | SQA | 1d | 2022-11-11 A | 2022-11-11 A | 2 | 100% |  |  |  |  | Serezane | 8h | 8h | 1.2 |
| 4 | 1.3 | Reunião de revisão | 1d | 2022-11-11 A | 2022-11-11 A | 2 | 100% |  |  |  |  | Batalhoti | 8h | 8h | 1.3 |
| 5 | 1.4 | Diagrama de Classes | 2d | 2022-11-23 A | 2022-11-24 A | 4 | 100% |  |  |  | start no earlier than 2022-11-23 | Becelli | 16h | 16h | 1.4 |
| 6 | 1.5 | SQA | 2d | 2022-11-25 A | 2022-11-28 A | 5 | 100% |  |  |  |  | Serezane | 16h | 16h | 1.5 |
| 7 | 1.6 | Reunião de Revisão | 1d | 2022-11-25 A | 2022-11-25 A | 5 | 100% |  |  |  |  | Batalhoti | 8h | 8h | 1.6 |
| 8 | 1.7 | Codificação | 5d | 2022-12-01 A | 2022-12-07 A | 7 | 100% |  |  |  | start no earlier than 2022-12-01 | Nozawa [150%] | 60h | 60h | 1.7 |
| 9 | 1.8 | SQA | 2d | 2022-12-08 | 2022-12-09 | 8 |  |  | 33d | 0d |  | Serezane | 16h |  | 1.8 |
| 10 | 1.9 | Reunião de Revisão | 2d | 2022-12-12 | 2022-12-13 | 9 |  |  | 33d |  |  | Batalhoti | 16h |  | 1.9 |
| 11 | 2 | **Sprint 02 - RF - 1.5 a 1.8** | 12d | 2022-12-08 A | 2022-12-23 | 8 | 20% | 9.6d | 25d |  |  |  | 128h | 25.6h | 2.0 |
| 12 | 2.1 | Casos de Uso + Modelo Conceitual | 3d | 2022-12-08 A | 2022-12-12 A |  | 100% |  |  |  | start no earlier than 2022-12-02 | Tomiasi | 24h | 24h | 2.1 |
| 13 | 2.2 | SQA | 2d | 2022-12-13 A | 2022-12-14 | 12 | 10% | 1.8d | 31d | 0d |  | Serezane | 16h | 1.6h | 2.2 |
| 14 | 2.3 | Reunião de revisão | 1d | 2022-12-15 | 2022-12-15 | 13 |  |  | 31d |  |  | Batalhoti | 8h |  | 2.3 |
| 15 | 2.4 | Diagrama de Classes | 2d | 2022-12-13 | 2022-12-14 | 12 |  |  | -2d | 0d |  | Becelli | 16h |  | 2.4 |
| 16 | 2.5 | SQA | 1d | 2022-12-15 | 2022-12-15 | 15 |  |  | -2d | 0d |  | Serezane | 8h |  | 2.5 |
| 17 | 2.6 | Reunião de Revisão | 1d | 2022-12-16 | 2022-12-16 | 16 |  |  | 30d |  |  | Batalhoti | 8h |  | 2.6 |
| 18 | 2.7 | Codificação | 3d | 2022-12-16 | 2022-12-20 | 16 |  |  | -2d | 0d |  | Nozawa | 24h |  | 2.7 |
| 19 | 2.8 | SQA | 2d | 2022-12-21 | 2022-12-22 | 18 |  |  | 25d | 0d |  | Serezane | 16h |  | 2.8 |
| 20 | 2.9 | Reunião de Revisão | 1d | 2022-12-23 | 2022-12-23 | 19 |  |  | 25d |  |  | Batalhoti | 8h |  | 2.9 |
| 21 | 3 | **Sprint 03 - RF - 1.9 a 1.11** | 14d | 2022-12-21 | 2023-01-09 | 18 |  |  | -2d | 0d |  |  |  |  | 3.0 |
| 22 | 3.1 | Casos de Uso + Modelo Conceitual | 3d | 2022-12-21 | 2022-12-23 |  |  |  | -2d | 0d |  |  |  |  | 3.1 |
| 23 | 3.2 | SQA | 1d | 2022-12-26 | 2022-12-26 | 22 |  |  | 24d |  |  |  |  |  | 3.2 |
| 24 | 3.3 | Reunião de revisão | 1d | 2022-12-26 | 2022-12-26 | 22 |  |  | -2d | 0d |  |  |  |  | 3.3 |
| 25 | 3.4 | Diagrama de Classes | 2d | 2022-12-27 | 2022-12-28 | 24 |  |  | -2d | 0d |  |  |  |  | 3.4 |
| 26 | 3.5 | SQA | 1d | 2022-12-29 | 2022-12-29 | 25 |  |  | 21d |  |  |  |  |  | 3.5 |
| 27 | 3.6 | Reunião de Revisão | 1d | 2022-12-29 | 2022-12-29 | 25 |  |  | 14d | 0d |  |  |  |  | 3.6 |
| 28 | 3.7 | Codificação | 4d | 2022-12-30 | 2023-01-04 | 27 |  |  | 14d | 0d |  |  |  |  | 3.7 |
| 29 | 3.8 | SQA | 2d | 2023-01-05 | 2023-01-06 | 28 |  |  | 14d | 0d |  |  |  |  | 3.8 |
| 30 | 3.9 | Reunião de Revisão | 1d | 2023-01-09 | 2023-01-09 | 29 |  |  | 14d |  |  |  |  |  | 3.9 |

| ID | WBS | Task | Duration | Start | Finish | Predecessors | Total slack | Free slack | EDT |
| --- | --- | --- | --- | --- | --- | --- | --- | --- | --- |
| 31 | 4 | **Sprint 04 - RF 2.1 a 2.4** | 14d | 2022-12-29 | 2023-01-17 | 25 | -2d | 0d | 4.0 |
| 32 | 4.1 | Casos de Uso + Modelo Conceitual | 3d | 2022-12-29 | 2023-01-02 |  | -2d | 0d | 4.1 |
| 33 | 4.2 | SQA | 2d | 2023-01-03 | 2023-01-04 | 32 | 7d |  | 4.2 |
| 34 | 4.3 | Reunião de revisão | 1d | 2023-01-03 | 2023-01-03 | 32 | -2d | 0d | 4.3 |
| 35 | 4.4 | Diagrama de Classes | 2d | 2023-01-04 | 2023-01-05 | 34 | -2d | 0d | 4.4 |
| 36 | 4.5 | SQA | 2d | 2023-01-06 | 2023-01-09 | 35 | 4d |  | 4.5 |
| 37 | 4.6 | Reunião de Revisão | 1d | 2023-01-06 | 2023-01-06 | 35 | -2d | 0d | 4.6 |
| 38 | 4.7 | Codificação | 4d | 2023-01-09 | 2023-01-12 | 37 | -2d | 0d | 4.7 |
| 39 | 4.8 | SQA | 2d | 2023-01-13 | 2023-01-16 | 38 | -2d | 0d | 4.8 |
| 40 | 4.9 | Reunião de Revisão | 1d | 2023-01-17 | 2023-01-17 | 39 | -2d | 0d | 4.9 |
| 41 | 5 | **Sprint 05 - RF 3.1 a 3.4** | 10d? | 2023-01-13 | 2023-01-26 | 31 |  |  | 5.0 |
| 42 | 5.1 | Casos de Uso + Modelo Conceitual | 2d | 2023-01-13 | 2023-01-16 |  | 1d | 0d |  |
| 43 | 5.2 | SQA | 1d? | 2023-01-17 | 2023-01-17 | 42 | 7d |  |  |
| 44 | 5.3 | Reunião de revisão | 1d? | 2023-01-17 | 2023-01-17 | 42 | 1d | 0d |  |
| 45 | 5.4 | Diagrama de Classes | 1d? | 2023-01-18 | 2023-01-18 | 44 | 1d | 0d |  |
| 46 | 5.5 | SQA | 1d? | 2023-01-19 | 2023-01-19 | 45 | 5d |  |  |
| 47 | 5.6 | Reunião de Revisão | 1d? | 2023-01-19 | 2023-01-19 | 45 | 1d | 0d |  |
| 48 | 5.7 | Codificação | 2d | 2023-01-20 | 2023-01-23 | 47 | 1d | 0d |  |
| 49 | 5.8 | SQA | 1d? | 2023-01-24 | 2023-01-24 | 48 | 1d | 0d |  |
| 50 | 5.9 | Reunião de Revisão | 1d? | 2023-01-25 | 2023-01-25 | 49 | 1d |  |  |
| 51 | 6 | Finalização | 1d | 2023-01-27 | 2023-01-27 | 41 | 0d |  | 6.0 |
